# Planning_Prévisionnel

Schedule from MS Project, 2023-09-25 to 2024-01-12, status date 2024-01-18, 7 hours a day, costs in FCFA, A marks actual dates.

## Calendars

- Standard: Mon-Fri 09:00-12:00, 14:00-18:00; Sat-Sun off.

## Resources

| Resource | Rate |
| --- | --- |
| TANKWA | 1700 |

## Schedule

| ID | WBS | Task | Type | Duration | Start | Finish | Predecessors | Complete | Remaining | Baseline start | Baseline finish | Baseline duration | Total slack | Constraint | Resources | Work | Actual work | Cost | Baseline cost | Actual cost |
| --- | --- | --- | --- | --- | --- | --- | --- | --- | --- | --- | --- | --- | --- | --- | --- | --- | --- | --- | --- | --- |
| 1 | 1 | Getting to know the project | manual | 1d | 2023-09-25 A | 2023-09-25 A |  | 100% |  | 2023-09-25 | 2023-09-25 | 1d |  |  | TANKWA | 7h | 7h | 11,900 | 11,900 | 11,900 |
| 2 | 2 | **Study of the existing situation, tools and research (Documentation)** |  | 5d | 2023-09-26 A | 2023-10-02 A | 1 | 100% |  | 2023-09-26 | 2023-09-28 | 3d |  |  | TANKWA | 35h | 35h | 59,500 | 35,700 | 59,500 |
| 3 | 2.1 | Study of concepts in Dart | manual | 1d | 2023-09-26 A | 2023-09-26 A |  | 100% |  | 2023-09-26 | 2023-09-26 | 1d |  |  |  |  |  |  |  |  |
| 4 | 2.2 | Study of concepts in Flutter | manual | 2d | 2023-09-27 A | 2023-09-28 A |  | 100% |  | 2023-09-27 | 2023-09-28 | 2d |  |  |  |  |  |  |  |  |
| 5 | 2.3 | Study of concepts in Firebase |  | 3d | 2023-09-28 A | 2023-10-02 A |  | 100% |  | 2023-09-28 | 2023-09-28 | 1d |  | start no earlier than 2023-09-28 |  |  |  |  |  |  |
| 6 | 3 | Realization of the Project's Specifications | manual | 2d | 2023-10-02 A | 2023-10-03 A | 2 | 100% |  | 2023-09-29 | 2023-09-29 | 1d |  |  | TANKWA | 14h | 14h | 23,800 | 11,900 | 23,800 |
| 7 | 4 | **Conception and Design** |  | 14d | 2023-10-04 A | 2023-10-23 A | 6 | 100% |  | 2023-10-02 | 2023-10-11 | 8d |  |  | TANKWA | 238h | 238h | 404,600 | 226,100 | 404,600 |
| 8 | 4.1 | **UML Diagrams Conception** |  | 3d | 2023-10-04 A | 2023-10-06 A | 6 | 100% |  | 2023-10-02 | 2023-10-03 | 2d |  |  | TANKWA | 49h | 49h | 83,300 | 59,500 | 83,300 |
| 9 | 4.1.1 | Use Case Diagram | manual | 1d | 2023-10-04 A | 2023-10-04 A |  | 100% |  | 2023-10-02 | 2023-10-02 | 1d |  |  | TANKWA | 7h | 7h | 11,900 | 11,900 | 11,900 |
| 10 | 4.1.2 | Sequence Diagram | manual | 1d | 2023-10-04 A | 2023-10-04 A |  | 100% |  | 2023-10-02 | 2023-10-02 | 1d |  |  | TANKWA | 7h | 7h | 11,900 | 11,900 | 11,900 |
| 11 | 4.1.3 | Class Diagram | manual | 2d | 2023-10-05 A | 2023-10-06 A | 9, 10 | 100% |  | 2023-10-03 | 2023-10-03 | 1d |  |  | TANKWA | 14h | 14h | 23,800 | 11,900 | 23,800 |
| 12 | 4.2 | Choice of the App's design and workflow | manual | 3d | 2023-10-06 A | 2023-10-10 A | 8 | 100% |  | 2023-10-04 | 2023-10-04 | 1d |  |  | TANKWA | 21h | 21h | 35,700 | 11,900 | 35,700 |
| 13 | 4.3 | Realization of the App's Interfaces Mockup | manual | 10d | 2023-10-10 A | 2023-10-23 A | 12 | 100% |  | 2023-10-05 | 2023-10-11 | 5d |  |  | TANKWA | 70h | 70h | 119,000 | 59,500 | 119,000 |
| 14 | 5 | **Implementation** |  | 41d | 2023-10-24 A | 2023-12-19 | 7 | 85% | 6d | 2023-10-12 | 2023-11-03 | 17d | 0d |  | TANKWA | 574h | 336.95h | 975,800 | 404,600 | 572,823.5 |
| 15 | 5.1 | Coding the different interfaces (Front-end) | manual | 10d | 2023-10-24 A | 2023-11-06 A |  | 100% |  | 2023-10-12 | 2023-10-18 | 5d |  |  | TANKWA | 70h | 70h | 119,000 | 59,500 | 119,000 |
| 16 | 5.2 | Creating and Configuring of the database | manual | 1d | 2023-11-07 A | 2023-11-07 A | 15 | 100% |  | 2023-10-19 | 2023-10-19 | 1d |  |  | TANKWA | 7h | 7h | 11,900 | 11,900 | 11,900 |
| 17 | 5.3 | Coding the App's Logic and back-end | manual | 30d | 2023-11-08 A | 2023-12-19 | 16 | 80% | 6d | 2023-10-20 | 2023-11-03 | 11d |  |  | TANKWA | 210h | 168h | 357,000 | 130,900 | 285,600 |
| 18 | 6 | **Testing** |  | 6d | 2023-12-19 A | 2023-12-26 | 14 | 63% | 2.2d | 2023-11-06 | 2023-11-15 | 8d | 0d |  | TANKWA | 84h | 61.6h | 142,800 | 202,300 | 104,720 |
| 19 | 6.1 | Coding of the various unit tests | manual | 1d | 2023-12-19 A | 2023-12-19 |  | 30% | 0.7d | 2023-11-06 | 2023-11-09 | 4d |  |  | TANKWA | 7h | 2.1h | 11,900 | 47,600 | 3,570 |
| 20 | 6.2 | Realization of the App's functional test | manual | 5d | 2023-12-20 A | 2023-12-26 |  | 70% | 1.5d | 2023-11-09 | 2023-11-15 | 5d |  |  | TANKWA | 35h | 24.5h | 59,500 | 59,500 | 41,650 |
| 21 | 7 | Optimization and Improvement of the App | manual | 11d | 2023-12-27 A | 2024-01-10 | 18 | 80% | 2.2d | 2023-11-16 | 2023-11-22 | 5d |  |  | TANKWA | 77h | 61.6h | 130,900 | 59,500 | 104,720 |
| 22 | 8 | App's Documentation (privacy policy, conditions of use, user manual) | manual | 2d | 2024-01-11 A | 2024-01-12 |  | 60% | 0.8d | 2023-11-27 | 2023-11-28 | 2d |  |  | TANKWA | 14h | 8.4h | 23,800 | 23,800 | 14,280 |
